# ProyectoABP

Schedule from MS Project, 2016-09-12 to 2017-09-11, 10 hours a day, costs in €, A marks actual dates.
UA

## Calendars

- Estándar: Mon-Fri 09:00-13:00, 15:00-19:00; Sat-Sun off. Exceptions (off unless hours are given): 2016-11-19 09:00-13:00, 15:00-19:00, 2016-12-24 09:00-13:00, 15:00-19:00, 2017-01-28 09:00-13:00, 15:00-19:00.

## Resources

| Resource | Rate |
| --- | --- |
| Nahiara | 10 |
| Manuel | 10 |
| Ricardo | 10 |
| Antonio | 10 |
| Jorge | 10 |

## Schedule

| ID | WBS | Task | Duration | Start | Finish | Predecessors | Complete | Remaining | Total slack | Free slack | Constraint | Resources | Work | Cost |
| --- | --- | --- | --- | --- | --- | --- | --- | --- | --- | --- | --- | --- | --- | --- |
| 2 | 1 | **HITO 0** | 22.4d? | 2016-09-12 09:00 A | 2016-10-19 19:00 |  | 64% | 8.07d? | 13d | 0d |  |  |  |  |
| 3 | 1.1 | **PM** | 22.4d? | 2016-09-12 09:00 | 2016-10-19 19:00 |  |  |  | 13d |  |  |  |  |  |
| 4 | 1.1.1 | Rellenar documentos de proyecto | 10.4d? | 2016-09-12 09:00 | 2016-09-28 19:00 |  |  |  | 13d | 0d | start no earlier than 2016-09-12 09:00 |  |  |  |
| 5 | 1.1.2 | Rellenar hoja de presupuesto | 4d? | 2016-09-29 09:00 | 2016-10-05 19:00 | 4 |  |  | 13d | 0d | finish no earlier than 2016-10-05 19:00 |  |  |  |
| 6 | 1.1.3 | Hacer project | 8d? | 2016-10-06 09:00 | 2016-10-19 19:00 | 5 |  |  | 13d |  | start no earlier than 2016-10-06 09:00 |  |  |  |
| 7 | 1.2 | **SMBI** | 22.4d? | 2016-09-12 09:00 A | 2016-10-19 19:00 |  | 73% | 6.03d? | 13d |  |  |  |  |  |
| 8 | 1.2.1 | Diseño integral de la arquitectura técnica | 22.4d? | 2016-09-12 09:00 A | 2016-10-19 19:00 |  | 73% | 6.03d? | 13d |  | start no earlier than 2016-09-12 09:00 |  |  |  |
| 9 | 1.2.2 | Especificación de elementos y tecnologías de seguridad y autenticación | 22.4d? | 2016-09-12 09:00 A | 2016-10-19 19:00 |  | 73% | 6.03d? | 13d |  | finish no earlier than 2016-10-19 19:00 |  |  |  |
| 10 | 1.2.3 | Especificación de API Rest y modelo de datos | 22.4d? | 2016-09-12 09:00 A | 2016-10-19 19:00 |  | 73% | 6.03d? | 13d |  | finish no earlier than 2016-10-19 19:00 |  |  |  |
| 11 | 1.3 | **SMA** | 22.4d? | 2016-09-12 09:00 A | 2016-10-19 19:00 |  | 73% | 6.03d? | 13d |  |  |  |  |  |
| 12 | 1.3.1 | Diseño funcional: documentación con la especificación de todas las funcionalidades del sistema | 22.4d? | 2016-09-12 09:00 A | 2016-10-19 19:00 |  | 73% | 6.03d? | 13d |  | start no earlier than 2016-09-12 09:00 |  |  |  |
| 13 | 1.3.2 | Diseño de baja fidelidad de interfaces(mockups): documentación con todas las interfaces diseñadas mediante mockups | 22.4d? | 2016-09-12 09:00 A | 2016-10-19 19:00 |  | 73% | 6.03d? | 13d |  | start no earlier than 2016-09-12 09:00 |  |  |  |
| 14 | 1.4 | **NM** | 22.4d? | 2016-09-12 09:00 A | 2016-10-19 19:00 |  | 73% | 6.03d? | 13d |  |  |  |  |  |
| 15 | 1.4.1 | Diseño funcional y visualización del proyecto: documentación con la especificación de todas las funcionalidades del sistema | 22.4d? | 2016-09-12 09:00 A | 2016-10-19 19:00 |  | 73% | 6.03d? | 13d |  | start no earlier than 2016-09-12 09:00 |  |  |  |
| 16 | 1.4.2 | Especificación y visualización de elementos y tecnologías a utilizar, por ejemplo mediante la definición de una infografía del proyecto | 22.4d? | 2016-09-12 09:00 A | 2016-10-19 19:00 |  | 73% | 6.03d? | 13d |  | start no earlier than 2016-09-12 09:00 |  |  |  |
| 18 | 2 | **HITO 1** | 37d | 2016-10-20 09:00 | 2016-12-22 11:00 | 2 |  |  | 13d |  |  |  | 386h | 3,860 |
| 19 | 2.1 | **Iteración 1** | 4.7d | 2016-10-20 09:00 | 2016-10-27 18:00 | 2 |  |  | 10.9d | 3.3d |  |  | 55h | 550 |
| 20 | 2.1.1 | **PM** | 1.1d | 2016-10-20 09:00 | 2016-10-21 12:00 |  |  |  | 14.5d |  |  |  | 11h | 110 |
| 21 | 2.1.1.1 | **Planificación** | 1.1d | 2016-10-20 09:00 | 2016-10-21 12:00 |  |  |  | 14.5d |  |  |  | 11h | 110 |
| 22 | 2.1.1.1.1 | Detallar plan iteraciones del mes de Noviembre | 5h | 2016-10-20 09:00 | 2016-10-20 16:00 |  |  |  | 14.5d | 0d |  | Nahiara | 5h | 50 |
| 23 | 2.1.1.1.2 | Creación Subtareas y precedencias en Project | 6h | 2016-10-20 16:00 | 2016-10-21 12:00 | 22 |  |  | 14.5d |  |  | Nahiara | 6h | 60 |
| 24 | 2.1.2 | **SMBI** | 0.3d | 2016-10-24 16:00 | 2016-10-24 19:00 |  |  |  | 10.9d |  |  |  | 9h | 90 |
| 25 | 2.1.2.1 | Diseñar diagrama preliminar del Modelo de BD | 3h | 2016-10-24 16:00 | 2016-10-24 19:00 |  |  |  | 10.9d | 0d | finish no earlier than 2016-10-24 19:00 | Antonio; Manuel; Nahiara | 9h | 90 |
| 26 | 2.1.3 | **PD** | 2.3d | 2016-10-25 09:00 | 2016-10-27 18:00 |  |  |  | 10.9d |  |  |  | 31h | 310 |
| 27 | 2.1.3.1 | Diseño logo | 8h | 2016-10-25 09:00 | 2016-10-25 19:00 | 25 |  |  | 10.9d | 0d |  | Antonio; Manuel | 16h | 160 |
| 28 | 2.1.3.2 | Crear video de logo | 15h | 2016-10-26 09:00 | 2016-10-27 18:00 | 27 |  |  | 10.9d |  |  | Antonio | 15h | 150 |

| ID | WBS | Task | Duration | Start | Finish | Predecessors | Total slack | Free slack | Constraint | Resources | Work | Cost |
| --- | --- | --- | --- | --- | --- | --- | --- | --- | --- | --- | --- | --- |
| 29 | 2.1.4 | **Otras tareas** | 0.4d | 2016-10-25 09:00 | 2016-10-25 13:00 |  | 12.8d |  |  |  | 4h | 40 |
| 30 | 2.1.4.1 | Corregir diagramas Caso de uso | 4h | 2016-10-25 09:00 | 2016-10-25 13:00 | 25 | 12.8d |  |  | Nahiara | 4h | 40 |
| 31 | 2.2 | **Iteración 2** | 7.75d | 2016-11-03 09:00 | 2016-11-16 16:30 | 19 | 1.05d | 0.25d |  |  | 74h | 740 |
| 32 | 2.2.1 | **PM** | 6.75d | 2016-11-03 09:00 | 2016-11-15 12:30 |  | 2.05d |  |  |  | 10.5h | 105 |
| 33 | 2.2.1.1 | Ordenar tareas por iteraciones | 5h | 2016-11-03 09:00 | 2016-11-03 16:00 |  | 7.7d | 5.7d | start no earlier than 2016-11-03 09:00 | Nahiara | 5h | 50 |
| 34 | 2.2.1.2 | **Seguimiento** | 0.35d | 2016-11-15 09:00 | 2016-11-15 12:30 |  | 1.2d |  |  |  | 5.5h | 55 |
| 35 | 2.2.1.2.1 | Registrar de tiempos y % de realización de tareas en Project | 1h | 2016-11-15 09:00 | 2016-11-15 10:00 |  | 2.2d | 0d | start no earlier than 2016-11-15 09:00 | Nahiara | 1h | 10 |
| 36 | 2.2.1.2.2 | Comparar la planificación prevista y real en Project hito 1. | 1h | 2016-11-15 10:00 | 2016-11-15 11:00 | 35 | 2.2d |  | start no earlier than 2016-11-15 09:00 | Nahiara | 1h | 10 |
| 37 | 2.2.1.2.3 | Confeccionar Informes de iteración e informe resumen de Hito 1 | 3.5h | 2016-11-15 09:00 | 2016-11-15 12:30 |  | 1.2d | 0d | start no earlier than 2016-11-15 09:00 | Ricardo | 3.5h | 35 |
| 38 | 2.2.2 | **SDM** | 2.95d | 2016-11-11 09:00 | 2016-11-16 16:30 |  | 1.05d |  |  |  | 32.5h | 325 |
| 39 | 2.2.2.1 | Actualizar Lean Canvas | 2h | 2016-11-14 09:00 | 2016-11-14 11:00 | 46 | 3d |  | start no earlier than 2016-11-14 09:00 | Manuel | 2h | 20 |
| 40 | 2.2.2.2 | Actualizar Presupuesto SDM y ELE | 2.5h | 2016-11-16 12:00 | 2016-11-16 16:30 | 48 | 1.05d |  | start no earlier than 2016-11-15 09:00 | Nahiara | 2.5h | 25 |
| 41 | 2.2.2.3 | **Hacer Documento de Especificacion** | 2.25d | 2016-11-11 09:00 | 2016-11-15 17:30 |  | 1.75d |  |  |  | 19h | 190 |
| 42 | 2.2.2.3.1 | **Definir objetivo SDM** | 2.25d | 2016-11-11 09:00 | 2016-11-15 17:30 |  | 1.75d |  |  |  | 19h | 190 |
| 43 | 2.2.2.3.1.1 | Explicar CMS en nuestro proyecto | 2h | 2016-11-14 17:00 | 2016-11-14 19:00 | 33 | 2d | 0d | finish no earlier than 2016-11-14 19:00 | Nahiara | 2h | 20 |
| 44 | 2.2.2.3.1.2 | Explicar Difusion y Posicionamiento Web de nuestro proyecto | 3h | 2016-11-14 17:00 | 2016-11-15 10:00 |  | 2.3d |  | start no earlier than 2016-11-14 17:00 | Jorge | 3h | 30 |
| 45 | 2.2.2.3.1.3 | Explicar transformación de formatos en el proyecto | 4h | 2016-11-15 09:00 | 2016-11-15 13:00 | 43 | 2d |  | start no earlier than 2016-11-14 17:00 | Nahiara | 4h | 40 |
| 46 | 2.2.2.3.1.4 | Definir API's de terceros y propios a usar en el proyecto | 7h | 2016-11-11 09:00 | 2016-11-11 18:00 |  | 3.1d | 0.1d | start no earlier than 2016-11-11 09:00 | Manuel | 7h | 70 |
| 47 | 2.2.2.3.1.5 | Explicar uso de OAuth2.0(Delegar autorizacion) | 3h | 2016-11-15 12:30 | 2016-11-15 17:30 | 37 | 1.2d | 0.15d | start no earlier than 2016-11-14 17:00 | Ricardo | 3h | 30 |
| 48 | 2.2.2.4 | Hacer PowerPoint | 3h | 2016-11-16 09:00 | 2016-11-16 12:00 | 47 | 1.05d | 0d | start no earlier than 2016-11-16 09:00 | Jorge; Manuel; Nahiara | 9h | 90 |
| 49 | 2.2.3 | **SMA** | 1.2d | 2016-11-08 09:00 | 2016-11-09 13:00 |  | 5.2d |  |  |  | 24h | 240 |
| 50 | 2.2.3.1 | Hacer nuevos Mockups | 12h | 2016-11-08 09:00 | 2016-11-09 13:00 |  | 5.2d |  | start no earlier than 2016-11-08 09:00 | Jorge; Ricardo | 24h | 240 |
| 51 | 2.2.4 | **NM** | 0.35d | 2016-11-07 09:00 | 2016-11-07 12:30 |  | 6.85d |  |  |  | 7h | 70 |
| 52 | 2.2.4.1 | Definir metricas | 3.5h | 2016-11-07 09:00 | 2016-11-07 12:30 |  | 6.85d |  | start no earlier than 2016-11-07 09:00 | Ricardo | 3.5h | 35 |
| 53 | 2.2.4.2 | Especificar elementos y tecnologías a utilizar | 3.5h | 2016-11-07 09:00 | 2016-11-07 12:30 |  | 6.85d |  | start no earlier than 2016-11-07 09:00 | Manuel | 3.5h | 35 |

| ID | WBS | Task | Duration | Start | Finish | Predecessors | Total slack | Free slack | Constraint | Resources | Work | Cost |
| --- | --- | --- | --- | --- | --- | --- | --- | --- | --- | --- | --- | --- |
| 54 | 2.3 | **Iteración 3** | 8.8d | 2016-11-17 09:00 | 2016-11-30 19:00 | 31 | 0d |  |  |  | 149h | 1,490 |
| 55 | 2.3.1 | **PM** | 8d | 2016-11-18 09:00 | 2016-11-30 19:00 |  | 0d |  |  |  | 26h | 260 |
| 56 | 2.3.1.1 | **Documento de Planificación** | 6.3d | 2016-11-18 09:00 | 2016-11-28 18:00 |  | 1.7d |  |  |  | 21.5h | 215 |
| 57 | 2.3.1.1.1 | Hacer aparatado de Propósito | 2h | 2016-11-18 09:00 | 2016-11-18 11:00 |  | 7.4d | 0d | start no earlier than 2016-11-18 09:00 | Antonio | 2h | 20 |
| 58 | 2.3.1.1.2 | Hacer aparatado de Análisis de riesgos | 4h | 2016-11-18 11:00 | 2016-11-18 17:00 | 57 | 7.4d |  | start no earlier than 2016-11-18 09:00 | Antonio | 4h | 40 |
| 59 | 2.3.1.1.3 | Revisar y añadir Análisis de riesgos | 4h | 2016-11-28 09:00 | 2016-11-28 13:00 |  | 1.7d | 0d | start no earlier than 2016-11-28 09:00 | Nahiara | 4h | 40 |
| 60 | 2.3.1.1.4 | Hacer aparatado de Estimación de costes | 3h | 2016-11-18 09:00 | 2016-11-18 12:00 |  | 7.7d |  | start no earlier than 2016-11-18 09:00 | Manuel | 3h | 30 |
| 61 | 2.3.1.1.5 | Hacer aparatado de Agenda del proyecto | 3h | 2016-11-18 16:00 | 2016-11-18 19:00 |  | 7.2d |  | start no earlier than 2016-11-18 16:00 | Ricardo | 3h | 30 |
| 62 | 2.3.1.1.6 | Revisar y modificar Agenda del proyecto | 3h | 2016-11-28 15:00 | 2016-11-28 18:00 | 59 | 1.7d |  |  | Nahiara | 3h | 30 |
| 63 | 2.3.1.1.7 | Hacer aparatado de Mecanismos de seguimiento y control | 2.5h | 2016-11-18 16:00 | 2016-11-18 18:30 |  | 6.85d | 5.25d | start no earlier than 2016-11-18 16:00 | Jorge | 2.5h | 25 |
| 64 | 2.3.1.2 | **Seguimiento** | 1.6d | 2016-11-29 09:00 | 2016-11-30 19:00 |  | 0d |  |  |  | 4.5h | 45 |
| 65 | 2.3.1.2.1 | Registrar de tiempos y % de realización de tareas en Project | 1h | 2016-11-29 09:00 | 2016-11-29 10:00 |  | 1.5d |  | start no earlier than 2016-11-29 09:00 | Nahiara | 1h | 10 |
| 66 | 2.3.1.2.2 | Comparar la planificación prevista y real en Project hito 1. | 1h | 2016-11-30 18:00 | 2016-11-30 19:00 |  | 0d |  | finish no earlier than 2016-11-30 19:00 | Nahiara | 1h | 10 |
| 67 | 2.3.1.2.3 | Confeccionar Informes de iteración e informe resumen de Hito 1 | 2.5h | 2016-11-30 16:30 | 2016-11-30 19:00 |  | 0d |  | finish no earlier than 2016-11-30 19:00 | Nahiara | 2.5h | 25 |
| 68 | 2.3.2 | **SMBI** | 8.8d | 2016-11-17 09:00 | 2016-11-30 19:00 |  | 0d |  |  |  | 112h | 1,120 |
| 69 | 2.3.2.1 | **Infraestructura** | 2.4d | 2016-11-17 09:00 | 2016-11-19 19:00 |  | 0.2d |  |  |  | 50h | 500 |
| 70 | 2.3.2.1.1 | Instalar los elementos de backend y seguridad | 8h | 2016-11-17 09:00 | 2016-11-17 19:00 |  | 0.8d | 0.6d | start no earlier than 2016-11-17 09:00 | Antonio; Jorge; Manuel; Nahiara; Ricardo | 40h | 400 |
| 71 | 2.3.2.1.2 | Configurar de los elementos de backend y seguridad | 10h | 2016-11-18 17:00 | 2016-11-19 19:00 | 70 | 0.2d |  | finish no earlier than 2016-11-19 19:00 | Antonio | 10h | 100 |
| 72 | 2.3.2.2 | **Investigación** | 6.2d | 2016-11-21 11:00 | 2016-11-30 19:00 |  | 0d |  |  |  | 62h | 620 |
| 73 | 2.3.2.2.1 | Investigar sobre las tecnologías a usar y lenguaje de programación del backend | 62h | 2016-11-21 11:00 | 2016-11-30 19:00 | 71 | 0d |  | finish no earlier than 2016-11-30 19:00 | Antonio | 62h | 620 |
| 74 | 2.3.3 | **SMA** | 0.4d | 2016-11-28 15:00 | 2016-11-28 19:00 |  | 1.6d |  |  |  | 4h | 40 |
| 75 | 2.3.3.1 | **Diagrama de flujo de interfaces** | 0.4d | 2016-11-28 15:00 | 2016-11-28 19:00 |  | 1.6d |  |  |  | 4h | 40 |
| 76 | 2.3.3.1.1 | Definir interfaces y navegacion entre ellas | 4h | 2016-11-28 15:00 | 2016-11-28 19:00 | 63 | 1.6d |  | finish no earlier than 2016-11-28 19:00 | Jorge | 4h | 40 |
| 77 | 2.3.4 | **NM** | 0.4d | 2016-11-21 09:00 | 2016-11-21 13:00 |  | 5.7d |  |  |  | 4h | 40 |
| 78 | 2.3.4.1 | **Definición** | 0.4d | 2016-11-21 09:00 | 2016-11-21 13:00 |  | 5.7d |  |  |  | 4h | 40 |
| 79 | 2.3.4.1.1 | Definir indicadores principales del proyecto | 4h | 2016-11-21 09:00 | 2016-11-21 13:00 | 70 | 5.7d | 0d | start no earlier than 2016-11-21 09:00 | Ricardo | 4h | 40 |

| ID | WBS | Task | Duration | Start | Finish | Predecessors | Total slack | Free slack | Constraint | Resources | Work | Cost |
| --- | --- | --- | --- | --- | --- | --- | --- | --- | --- | --- | --- | --- |
| 80 | 2.3.5 | **ELE** | 0.3d | 2016-11-21 15:00 | 2016-11-21 18:00 |  | 5.7d |  |  |  | 3h | 30 |
| 81 | 2.3.5.1 | **Tarea 1** | 0.3d | 2016-11-21 15:00 | 2016-11-21 18:00 |  | 5.7d |  |  |  | 3h | 30 |
| 82 | 2.3.5.1.1 | Realizar MOOC y Lean Canvas | 3h | 2016-11-21 15:00 | 2016-11-21 18:00 | 79 | 5.7d |  | start no earlier than 2016-11-17 09:00 | Ricardo | 3h | 30 |
| 83 | 2.4 | **Iteracion 4** | 7.4d | 2016-12-01 09:00 | 2016-12-14 11:00 | 54 | 0d |  |  |  | 88h | 880 |
| 84 | 2.4.1 | **PM** | 1d | 2016-12-13 09:00 | 2016-12-14 11:00 |  | 155d |  |  |  | 10h | 100 |
| 85 | 2.4.1.1 | **Seguimiento** | 0.6d | 2016-12-13 09:00 | 2016-12-13 17:00 |  | 155d |  |  |  | 6h | 60 |
| 86 | 2.4.1.1.1 | Registrar de tiempos y % de realización de tareas en Project | 2h | 2016-12-13 09:00 | 2016-12-13 11:00 |  | 155d | 0d | start no earlier than 2016-12-13 09:00 | Nahiara | 2h | 20 |
| 87 | 2.4.1.1.2 | Comparar la planificación prevista y real en Project hito 1. | 2h | 2016-12-13 11:00 | 2016-12-13 13:00 | 86 | 155d | 0d | start no earlier than 2016-12-01 09:00 | Nahiara | 2h | 20 |
| 88 | 2.4.1.1.3 | Confeccionar Informes de iteración e informe resumen de Hito 1 | 2h | 2016-12-13 15:00 | 2016-12-13 17:00 | 87 | 155d | 0d | start no earlier than 2016-12-01 09:00 | Nahiara | 2h | 20 |
| 89 | 2.4.1.2 | **Ejercicio Propuesto** | 0.4d | 2016-12-13 17:00 | 2016-12-14 11:00 |  | 155d |  |  |  | 4h | 40 |
| 90 | 2.4.1.2.1 | Aplicar el modelo EVA en Project | 4h | 2016-12-13 17:00 | 2016-12-14 11:00 | 88 | 155d |  |  | Nahiara | 4h | 40 |
| 91 | 2.4.2 | **SMBI** | 3.6d | 2016-12-06 15:00 | 2016-12-12 19:00 |  | 156d |  |  |  | 68h | 680 |
| 92 | 2.4.2.1 | **Investigación** | 1.2d | 2016-12-06 15:00 | 2016-12-07 19:00 |  | 156d | 0d |  |  | 12h | 120 |
| 93 | 2.4.2.1.1 | Investigar sobre las tecnologías a usar y lenguaje de programación del backend | 12h | 2016-12-06 15:00 | 2016-12-07 19:00 |  | 156d | 0d | finish no earlier than 2016-12-07 19:00 | Antonio | 12h | 120 |
| 94 | 2.4.2.2 | **Configuración de los elemenos de backend** | 1.4d | 2016-12-08 09:00 | 2016-12-09 17:00 | 92 | 156d | 0d |  |  | 26h | 260 |
| 95 | 2.4.2.2.1 | Diseñar BBDD - Primer diseño | 3h | 2016-12-08 09:00 | 2016-12-08 12:00 |  | 157.1d | 1.1d | start no earlier than 2016-12-01 09:00 | Ricardo | 3h | 30 |
| 96 | 2.4.2.2.2 | Diseñar BBDD - Segundo diseño | 3h | 2016-12-08 09:00 | 2016-12-08 12:00 |  | 157.1d | 1.1d | start no earlier than 2016-12-05 09:00 | Nahiara | 3h | 30 |
| 97 | 2.4.2.2.3 | Diseñar BBDD - Definitivo | 6h | 2016-12-08 09:00 | 2016-12-08 17:00 |  | 156.8d | 0.8d | start no earlier than 2016-12-06 09:00 | Manuel | 6h | 60 |
| 98 | 2.4.2.2.4 | Gestionar la transaccionalidad de la BD con lenguaje Java | 14h | 2016-12-08 09:00 | 2016-12-09 17:00 | 93 | 156d | 0d | start no earlier than 2016-12-02 09:00 | Antonio | 14h | 140 |
| 99 | 2.4.2.3 | **Integracion modelos MySQL en JAVA** | 1d | 2016-12-09 17:00 | 2016-12-12 19:00 | 94 | 156d |  |  |  | 30h | 300 |
| 100 | 2.4.2.3.1 | Investigar e Integrar tablas asignadas | 10h | 2016-12-09 17:00 | 2016-12-12 19:00 | 98 | 156d |  |  | Antonio | 10h | 100 |
| 101 | 2.4.2.3.2 | Integrar tablas asignadas | 5h | 2016-12-09 17:00 | 2016-12-12 12:00 |  | 156.5d |  |  | Jorge | 5h | 50 |
| 102 | 2.4.2.3.3 | Integrar tablas asignadas | 5h | 2016-12-09 17:00 | 2016-12-12 12:00 | 95 | 156.5d |  |  | Ricardo | 5h | 50 |
| 103 | 2.4.2.3.4 | Integrar tablas asignadas | 5h | 2016-12-09 17:00 | 2016-12-12 12:00 | 96 | 156.5d |  |  | Nahiara | 5h | 50 |
| 104 | 2.4.2.3.5 | Integrar tablas asignadas | 5h | 2016-12-09 17:00 | 2016-12-12 12:00 | 97 | 156.5d |  |  | Manuel | 5h | 50 |

| ID | WBS | Task | Duration | Start | Finish | Predecessors | Total slack | Free slack | Constraint | Resources | Work | Cost |
| --- | --- | --- | --- | --- | --- | --- | --- | --- | --- | --- | --- | --- |
| 105 | 2.4.3 | **SMA** | 0.4d | 2016-12-02 09:00 | 2016-12-02 13:00 |  | 161.2d |  |  |  | 4h | 40 |
| 106 | 2.4.3.1 | **Documentación** | 0.4d | 2016-12-02 09:00 | 2016-12-02 13:00 |  | 161.2d |  |  |  | 4h | 40 |
| 107 | 2.4.3.1.1 | Explicar el mapa de navegación entre interfaces | 4h | 2016-12-02 09:00 | 2016-12-02 13:00 |  | 161.2d |  | start no earlier than 2016-12-02 09:00 | Jorge | 4h | 40 |
| 108 | 2.4.4 | **NM** | 0.3d | 2016-12-02 09:00 | 2016-12-02 12:00 |  | 161.3d |  |  |  | 3h | 30 |
| 109 | 2.4.4.1 | **Contextualización** | 0.3d | 2016-12-02 09:00 | 2016-12-02 12:00 |  | 161.3d |  |  |  | 3h | 30 |
| 110 | 2.4.4.1.1 | Contextualizar modelo de datos | 3h | 2016-12-02 09:00 | 2016-12-02 12:00 |  | 161.3d | 0.5d | start no earlier than 2016-12-02 09:00 | Ricardo | 3h | 30 |
| 111 | 2.4.5 | **TAG** | 1.9d | 2016-12-01 09:00 | 2016-12-05 12:00 |  | 0d |  |  |  | 3h | 30 |
| 112 | 2.4.5.1 | **Visualización** | 0.8d? | 2016-12-01 09:00 | 2016-12-01 19:00 |  |  |  |  |  | 3h | 30 |
| 113 | 2.4.5.1.1 | Hacer un visualizador OpenGL 4.X simple, con datos por programa. Shader básico. | 3h | 2016-12-05 09:00 | 2016-12-05 12:00 | 110 | 161.5d |  | start no earlier than 2016-12-05 09:00 | Ricardo | 3h | 30 |
| 114 | 2.5 | **Iteracion 5** | 4.8d | 2016-12-14 11:00 | 2016-12-22 11:00 | 83 | 151.2d |  |  |  | 20h | 200 |
| 115 | 2.5.1 | **PM** | 1d | 2016-12-21 09:00 | 2016-12-22 11:00 |  | 151.2d |  |  |  | 10h | 100 |
| 116 | 2.5.1.1 | **Seguimiento** | 1d | 2016-12-21 09:00 | 2016-12-22 11:00 |  | 151.2d |  |  |  | 10h | 100 |
| 117 | 2.5.1.1.1 | Registrar de tiempos y % de realización de tareas en Project | 4h | 2016-12-21 09:00 | 2016-12-21 13:00 |  | 151.2d | 0d | start no earlier than 2016-12-21 09:00 | Nahiara | 4h | 40 |
| 118 | 2.5.1.1.2 | Comparar la planificación prevista y real en Project hito 1. | 4h | 2016-12-21 15:00 | 2016-12-21 19:00 | 117 | 151.2d | 0d | start no earlier than 2016-12-20 09:00 | Nahiara | 4h | 40 |
| 119 | 2.5.1.1.3 | Confeccionar Informes de iteración e informe resumen de Hito 1 | 2h | 2016-12-22 09:00 | 2016-12-22 11:00 | 118 | 151.2d |  | start no earlier than 2016-12-21 09:00 | Nahiara | 2h | 20 |
| 120 | 2.5.2 | **SMBI** | 3.9d | 2016-12-14 11:00 | 2016-12-21 10:00 |  | 152.1d |  |  |  | 10h | 100 |
| 121 | 2.5.2.1 | **Pruebas** | 0.3d | 2016-12-14 11:00 | 2016-12-14 16:00 |  | 155.7d |  |  |  | 3h | 30 |
| 122 | 2.5.2.1.1 | Hacer pruebas unitarias | 3h | 2016-12-14 11:00 | 2016-12-14 16:00 |  | 155.7d |  |  | Antonio | 3h | 30 |
| 123 | 2.5.2.2 | **Desarrollo** | 1.7d | 2016-12-19 09:00 | 2016-12-21 10:00 |  | 152.1d |  |  |  | 7h | 70 |
| 124 | 2.5.2.2.1 | Implementación API RESTFULL | 6h | 2016-12-19 09:00 | 2016-12-19 17:00 |  | 153.1d | 1d | start no earlier than 2016-12-19 09:00 | Antonio | 6h | 60 |
| 125 | 2.5.2.2.2 | Hacer documentacion | 1h | 2016-12-21 09:00 | 2016-12-21 10:00 | 124 | 152.1d |  | start no earlier than 2016-12-21 09:00 | Antonio | 1h | 10 |
| 126 | 3 | **HITO 2** | 71.5d? | 2016-10-03 09:00 | 2017-01-31 12:00 |  | 67.8d | 0.5d |  |  | 131.5h | 1,315 |
| 127 | 3.1 | **Iteración 1** | 57.75d? | 2016-10-03 09:00 | 2017-01-09 10:30 |  | 78.05d | 0d |  |  | 48.5h | 485 |
| 128 | 3.1.1 | **PM** | 57.75d? | 2016-10-03 09:00 | 2017-01-09 10:30 |  | 78.05d |  |  |  | 14.5h | 145 |
| 129 | 3.1.1.1 | **Especificación** | 0.2d | 2016-10-03 09:00 | 2016-10-03 11:00 |  | 134.65d | 50.2d |  |  | 2h | 20 |
| 130 | 3.1.1.1.1 | Revisar especificación proyecto. | 2h | 2016-10-03 09:00 | 2016-10-03 11:00 |  | 134.65d | 50.2d |  | Nahiara | 2h | 20 |

| ID | WBS | Task | Duration | Start | Finish | Predecessors | Total slack | Free slack | Constraint | Resources | Work | Cost |
| --- | --- | --- | --- | --- | --- | --- | --- | --- | --- | --- | --- | --- |
| 131 | 3.1.1.2 | **Estimación** | 0.3d | 2016-12-27 09:00 | 2016-12-27 12:00 | 129 | 84.45d | 0d |  |  | 3h | 30 |
| 132 | 3.1.1.2.1 | Reestimar proyecto | 3h | 2016-12-27 09:00 | 2016-12-27 12:00 | 130 | 84.45d | 0d | start no earlier than 2016-12-27 09:00 | Nahiara | 3h | 30 |
| 133 | 3.1.1.3 | **Planificación** | 0.65d | 2016-12-27 12:00 | 2016-12-28 10:30 | 131 | 84.45d |  |  |  | 6.5h | 65 |
| 134 | 3.1.1.3.1 | **Detallar plan iteraciones del mes de Enero** | 0.65d | 2016-12-27 12:00 | 2016-12-28 10:30 |  | 84.45d |  |  |  | 6.5h | 65 |
| 135 | 3.1.1.3.1.1 | Creación Subtareas y precedencias en Project | 3.5h | 2016-12-27 12:00 | 2016-12-27 17:30 | 132 | 84.45d | 0d | start no earlier than 2016-12-27 09:00 | Nahiara | 3.5h | 35 |
| 136 | 3.1.1.3.1.2 | Asignar recursos a las tareas en Project | 3h | 2016-12-27 17:30 | 2016-12-28 10:30 | 135 | 84.45d |  | start no earlier than 2016-12-27 09:00 | Nahiara | 3h | 30 |
| 137 | 3.1.1.4 | **Elaborar la presentación del Hito 1** | 0.15d? | 2017-01-09 09:00 | 2017-01-09 10:30 |  | 78.05d |  |  |  | 3h | 30 |
| 138 | 3.1.1.4.1 | Hacer PowerPoint | 1.5h? | 2017-01-09 09:00 | 2017-01-09 10:30 |  | 78.05d | 80.55d | start no earlier than 2017-01-09 09:00 | Nahiara; Jorge; Manuel; Ricardo; Antonio | 3h | 30 |
| 139 | 3.1.2 | **SMBI** | 1.5d | 2016-12-30 12:00 | 2017-01-03 11:00 |  | 81.2d |  |  |  | 30h | 300 |
| 140 | 3.1.2.1 | **Cambio tecnología** | 1.5d | 2016-12-30 12:00 | 2017-01-03 11:00 |  | 81.2d |  |  |  | 30h | 300 |
| 141 | 3.1.2.1.1 | Migrar lenguaje de desarrollo a PHP | 5h | 2016-12-30 12:00 | 2016-12-30 19:00 |  | 82.2d | 84.7d | finish no earlier than 2016-12-30 19:00 | Antonio; Manuel | 10h | 100 |
| 142 | 3.1.2.1.2 | Aprender uso nueva tecnología | 10h | 2017-01-02 09:00 | 2017-01-03 11:00 |  | 81.2d | 83.7d | start no earlier than 2017-01-02 09:00 | Antonio; Manuel | 20h | 200 |
| 143 | 3.1.3 | **NM** | 0.4d | 2016-10-03 09:00 | 2016-10-03 13:00 |  | 135.4d |  |  |  | 4h | 40 |
| 144 | 3.1.3.1 | Modelo para la integración de datos | 4h | 2016-10-03 09:00 | 2016-10-03 13:00 |  | 135.4d | 137.9d |  | Ricardo | 4h | 40 |
| 145 | 3.2 | **Iteración 2** | 13.75d | 2017-01-09 10:30 | 2017-01-31 12:00 | 127 | 67.8d |  |  |  | 83h | 830 |
| 146 | 3.2.1 | **SDM** | 4d | 2017-01-09 10:30 | 2017-01-16 10:30 |  | 77.45d | 0d |  |  | 27.5h | 275 |
| 147 | 3.2.1.1 | **Memoria ABP** | 2.6d | 2017-01-09 10:30 | 2017-01-12 12:30 |  | 78.85d |  |  |  | 24.5h | 245 |
| 148 | 3.2.1.1.1 | **Apartado 1** | 0.2d | 2017-01-09 10:30 | 2017-01-09 12:30 |  | 79.8d | 0d |  |  | 2h | 20 |
| 149 | 3.2.1.1.1.1 | Describir proyecto | 2h | 2017-01-09 10:30 | 2017-01-09 12:30 |  | 79.8d | 0.5d | start no earlier than 2017-01-09 10:30 | Nahiara | 2h | 20 |
| 150 | 3.2.1.1.2 | **Apartado 2** | 0.2d | 2017-01-09 12:30 | 2017-01-09 16:30 | 148 | 79.8d | 0d |  |  | 2h | 20 |
| 151 | 3.2.1.1.2.1 | Explicar diseño de aplicación | 2h | 2017-01-09 12:30 | 2017-01-09 16:30 |  | 79.8d | 0.3d | start no earlier than 2017-01-09 09:00 | Jorge | 2h | 20 |
| 152 | 3.2.1.1.3 | **Apartado 3** | 0.3d | 2017-01-09 16:30 | 2017-01-10 09:30 | 150 | 79.8d | 0d |  |  | 3h | 30 |
| 153 | 3.2.1.1.3.1 | Explicar marco tecnológico | 3h | 2017-01-09 16:30 | 2017-01-10 09:30 |  | 79.8d | 0d | start no earlier than 2017-01-09 09:00 | Manuel | 3h | 30 |
| 154 | 3.2.1.1.4 | **Descripcion de objetivos SDM en ABP** | 0.85d | 2017-01-10 09:30 | 2017-01-11 10:00 | 152 | 79.55d | 0.7d |  |  | 14h | 140 |
| 155 | 3.2.1.1.4.1 | Explicar uso de CMS | 2h | 2017-01-10 09:30 | 2017-01-10 11:30 | 149 | 79.8d | 0d | start no earlier than 2017-01-09 09:00 | Nahiara | 2h | 20 |
| 156 | 3.2.1.1.4.2 | Explicar uso de posicionamiento y difusion | 5h | 2017-01-10 09:30 | 2017-01-10 16:30 | 151 | 79.9d | 1.2d | start no earlier than 2017-01-09 09:00 | Jorge | 5h | 50 |
| 157 | 3.2.1.1.4.3 | Usar transformacion de formatos | 4h | 2017-01-10 11:30 | 2017-01-10 17:30 | 155 | 79.8d | 0.95d | start no earlier than 2017-01-09 09:00 | Nahiara | 4h | 40 |
| 158 | 3.2.1.1.4.4 | Explicar el consumo de API's | 2h | 2017-01-10 09:30 | 2017-01-10 11:30 | 153 | 80.1d | 0.55d | start no earlier than 2017-01-09 09:00 | Manuel | 2h | 20 |
| 159 | 3.2.1.1.4.5 | Explicar la autorizacion Oauth 2.0 | 1h | 2017-01-11 09:00 | 2017-01-11 10:00 | 158 | 79.55d |  | start no earlier than 2017-01-11 09:00 | Ricardo | 1h | 10 |

| ID | WBS | Task | Type | Duration | Start | Finish | Predecessors | Total slack | Free slack | Constraint | Resources | Work | Cost |
| --- | --- | --- | --- | --- | --- | --- | --- | --- | --- | --- | --- | --- | --- |
| 160 | 3.2.1.1.5 | **Apartado 5** |  | 0.15d | 2017-01-12 09:00 | 2017-01-12 10:30 | 154 | 78.85d | 0d |  |  | 1.5h | 15 |
| 161 | 3.2.1.1.5.1 | Explicar objetivos cumplidos |  | 1.5h | 2017-01-12 09:00 | 2017-01-12 10:30 | 157 | 78.85d | 0.1d | start no earlier than 2017-01-12 09:00 | Nahiara | 1.5h | 15 |
| 162 | 3.2.1.1.6 | **Conclusión** |  | 0.1d | 2017-01-12 10:30 | 2017-01-12 11:30 | 160 | 78.85d | 0d |  |  | 1h | 10 |
| 163 | 3.2.1.1.6.1 | Escribir conclusion de la memoria |  | 1h | 2017-01-12 10:30 | 2017-01-12 11:30 | 156 | 78.85d |  |  | Jorge | 1h | 10 |
| 164 | 3.2.1.1.7 | **Apartado 7** |  | 0.1d | 2017-01-12 11:30 | 2017-01-12 12:30 | 162 | 78.85d |  |  |  | 1h | 10 |
| 165 | 3.2.1.1.7.1 | Explicar Reparto del trabajo |  | 1h | 2017-01-12 11:30 | 2017-01-12 12:30 | 161 | 78.85d |  |  | Nahiara | 1h | 10 |
| 166 | 3.2.1.2 | **Presentación** |  | 0.15d | 2017-01-16 09:00 | 2017-01-16 10:30 |  | 77.45d |  |  |  | 3h | 30 |
| 167 | 3.2.1.2.1 | Hacer powerpoint para presentacion |  | 1.5h | 2017-01-16 09:00 | 2017-01-16 10:30 |  | 77.45d | 79.45d | start no earlier than 2017-01-16 09:00 | Nahiara; Ricardo | 3h | 30 |
| 168 | 3.2.2 | **SMA** |  | 0.1d | 2017-01-16 10:30 | 2017-01-16 11:30 | 146 | 77.45d |  |  |  | 1h | 10 |
| 169 | 3.2.2.1 | **Documento de SEO** |  | 0.1d | 2017-01-16 10:30 | 2017-01-16 11:30 |  | 77.45d |  |  | Jorge | 1h | 10 |
| 170 | 3.2.2.1.1 | Definir aspectos SEO como son palabras clave, estilos de textos, posiciones de texto, como se va a potenciar esto (landing, blog, etc…), URL amigables |  | 1h | 2017-01-16 10:30 | 2017-01-16 11:30 |  | 77.45d | 79.45d |  |  |  |  |
| 171 | 3.2.3 | **PM** |  | 0.8d | 2017-01-28 09:00 | 2017-01-28 19:00 |  | 68.9d | 70.9d |  |  | 8h | 80 |
| 172 | 3.2.3.1 | **Seguimiento** |  | 0.8d | 2017-01-28 09:00 | 2017-01-28 19:00 |  | 68.9d | 70.9d |  |  | 8h | 80 |
| 173 | 3.2.3.1.1 | Registrar de tiempos y % de realización de tareas en Project |  | 5h | 2017-01-28 09:00 | 2017-01-28 16:00 |  | 68.9d | 0d | start no earlier than 2017-01-28 09:00 | Nahiara | 5h | 50 |
| 174 | 3.2.3.1.2 | Comparar la planificación prevista y real en Project hito 2 |  | 3h | 2017-01-28 16:00 | 2017-01-28 19:00 | 173 | 68.9d | 0d | start no earlier than 2017-01-28 09:00 | Nahiara | 3h | 30 |
| 175 | 3.2.3.1.3 | Confeccionar Informes de iteración e informe resumen de Hito 2 | inactive | 2h | 2017-01-30 09:00 | 2017-01-30 11:00 | 174 | 68.7d | 70.7d | start no earlier than 2017-01-28 09:00 | Nahiara | 2h | 20 |
| 176 | 3.2.4 | **SMBI** |  | 3.5d | 2017-01-09 10:30 | 2017-01-13 15:30 |  | 78.05d | 80.55d |  |  | 30h | 300 |
| 177 | 3.2.4.1 | Implementar back-end |  | 3d | 2017-01-09 10:30 | 2017-01-13 15:30 |  | 78.05d | 80.55d |  | Manuel | 30h | 300 |
| 178 | 3.2.5 | **TAG** |  | 0.8d | 2017-01-30 09:00 | 2017-01-30 19:00 |  | 68.1d | 70.1d |  |  | 8h | 80 |
| 179 | 3.2.5.1 | **Gestión de recursos** |  | 0.8d | 2017-01-30 09:00 | 2017-01-30 19:00 |  | 68.1d | 70.1d |  |  | 8h | 80 |
| 180 | 3.2.5.1.1 | Parser de objetos en multiples formatos, salida en modo texto |  | 8h | 2017-01-30 09:00 | 2017-01-30 19:00 |  | 68.1d | 70.1d | finish no earlier than 2017-01-30 19:00 | Antonio | 8h | 80 |
| 181 | 3.2.5.2 | **Visualización** | inactive | 4d? | 2017-01-25 09:00 | 2017-01-30 19:00 |  | 68.1d | 70.1d |  |  | 40h | 400 |
| 182 | 3.2.5.2.1 | Visualizador OpenGL 4.X simple, con datos por programa. Shader básico. | inactive | 40h? | 2017-01-25 09:00 | 2017-01-30 19:00 |  | 68.1d | 70.1d | finish no earlier than 2017-01-30 19:00 | Antonio | 40h | 400 |
| 183 | 3.2.6 | **NM** |  | 0.25d | 2017-01-19 09:00 | 2017-01-19 11:30 |  | 75.05d | 77.05d |  |  | 2.5h | 25 |
| 184 | 3.2.6.1 | Incorporación de open data, API's, y otras fuentes heterogéneas |  | 2.5h | 2017-01-19 09:00 | 2017-01-19 11:30 |  | 75.05d | 77.05d | start no earlier than 2017-01-19 09:00 | Ricardo | 2.5h | 25 |

| ID | WBS | Task | Duration | Start | Finish | Predecessors | Total slack | Free slack | Constraint | Resources | Work | Cost |
| --- | --- | --- | --- | --- | --- | --- | --- | --- | --- | --- | --- | --- |
| 185 | 3.2.7 | **SMA** | 0.25d | 2017-01-09 10:30 | 2017-01-09 13:00 |  | 81.3d | 83.3d |  |  | 3h | 30 |
| 186 | 3.2.7.1 | **Arquitectura tecnológica** | 0.25d | 2017-01-09 10:30 | 2017-01-09 13:00 |  | 81.3d | 83.3d |  |  | 3h | 30 |
| 187 | 3.2.7.1.1 | Describir arquitectura tecnológica: documento sobre toma de decisión, versiones, codificación, internacionalización (varias lenguas), instalación sobre servidor de frameworks… | 2.5h | 2017-01-09 10:30 | 2017-01-09 13:00 |  | 81.3d | 83.3d |  | Antonio; Nahiara | 3h | 30 |
| 188 | 3.2.8 | **PD** | 0.3d | 2017-01-31 09:00 | 2017-01-31 12:00 |  | 67.8d | 69.8d |  |  | 3h | 30 |
| 189 | 3.2.8.1 | Cartel del proyecto | 3h | 2017-01-31 09:00 | 2017-01-31 12:00 |  | 67.8d | 69.8d | start no earlier than 2017-01-31 09:00 | Antonio | 3h | 30 |
| 190 | 4 | **HITO 3** | 97d? | 2017-02-01 09:00 | 2017-07-20 11:00 | 126 | 0d |  |  |  | 544h | 5,520 |
| 191 | 4.1 | **Iteracion 1** | 6.4d | 2017-02-01 09:00 | 2017-02-10 19:00 |  | 62.1d | 0d |  |  | 48h | 560 |
| 192 | 4.1.1 | **PM** | 0.8d | 2017-02-01 09:00 | 2017-02-01 19:00 |  | 67.3d |  |  |  | 8h | 80 |
| 193 | 4.1.1.1 | **Planificación** | 0.8d | 2017-02-01 09:00 | 2017-02-01 19:00 |  | 67.3d |  |  |  | 8h | 80 |
| 194 | 4.1.1.1.1 | **Detallar plan iteraciones del mes de Febrero-Marzo** | 0.8d | 2017-02-01 09:00 | 2017-02-01 19:00 |  | 67.3d |  |  |  | 8h | 80 |
| 195 | 4.1.1.1.1.1 | Crear Subtareas y precedencias en Project | 5h | 2017-02-01 09:00 | 2017-02-01 16:00 |  | 67.3d | 0d | start no earlier than 2017-02-01 09:00 | Nahiara | 5h | 50 |
| 196 | 4.1.1.1.1.2 | Asignar recursos a las tareas en Project. | 3h | 2017-02-01 16:00 | 2017-02-01 19:00 | 195 | 67.3d | 0d |  | Nahiara | 3h | 30 |
| 197 | 4.1.2 | **TAG** | 1.05d | 2017-02-06 09:00 | 2017-02-07 11:30 |  | 65.05d |  |  |  | 10.5h | 105 |
| 198 | 4.1.2.1 | **Arbol de la escena** | 1.05d | 2017-02-06 09:00 | 2017-02-07 11:30 |  | 65.05d |  |  |  | 10.5h | 105 |
| 199 | 4.1.2.1.1 | **Tipos de datos para nodos y entidades (4)** | 1.05d | 2017-02-06 09:00 | 2017-02-07 11:30 |  | 65.05d |  |  |  | 10.5h | 105 |
| 200 | 4.1.2.1.1.1 | Definir tipos de datos para nodos (completo) y entidades (sólo clase padre; clases hijas sin contenido) | 6h | 2017-02-06 09:00 | 2017-02-06 17:00 |  | 65.05d | 0d | start no earlier than 2017-02-06 09:00 | Antonio | 6h | 60 |
| 201 | 4.1.2.1.1.2 | Construir árbol | 2h | 2017-02-06 17:00 | 2017-02-06 19:00 | 200 | 65.05d | 0d |  | Antonio | 2h | 20 |
| 202 | 4.1.2.1.1.3 | Definir recorrido del arbol | 1.5h | 2017-02-07 09:00 | 2017-02-07 10:30 | 201 | 65.05d | 0d |  | Antonio | 1.5h | 15 |
| 203 | 4.1.2.1.1.4 | Implementar salida en modo texto | 1h | 2017-02-07 10:30 | 2017-02-07 11:30 | 202 | 65.05d | 67.05d |  | Antonio | 1h | 10 |
| 204 | 4.1.3 | **SMA** | 5.6d | 2017-02-02 09:00 | 2017-02-10 19:00 |  | 62.1d |  |  |  | 12h | 120 |
| 205 | 4.1.3.1 | **Guía de estilos** | 0.4d | 2017-02-02 09:00 | 2017-02-02 13:00 |  | 67.3d |  |  |  | 4h | 40 |
| 206 | 4.1.3.1.1 | Crear guia de estilos | 4h | 2017-02-02 09:00 | 2017-02-02 13:00 | 196 | 67.3d | 69.3d |  | Nahiara | 4h | 40 |
| 207 | 4.1.3.2 | **Creación de Interfaces** | 0.8d | 2017-02-10 09:00 | 2017-02-10 19:00 |  | 62.1d |  |  |  | 8h | 80 |
| 208 | 4.1.3.2.1 | Implementar Panel de Administrador | 5h | 2017-02-10 09:00 | 2017-02-10 16:00 |  | 62.1d | 0d | start no earlier than 2017-02-10 09:00 | Ricardo | 5h | 50 |
| 209 | 4.1.3.2.2 | Implementar Login | 3h | 2017-02-10 16:00 | 2017-02-10 19:00 | 208 | 62.1d | 64.1d |  | Ricardo | 3h | 30 |

| ID | WBS | Task | Duration | Start | Finish | Predecessors | Total slack | Free slack | Constraint | Resources | Work | Cost |
| --- | --- | --- | --- | --- | --- | --- | --- | --- | --- | --- | --- | --- |
| 210 | 4.1.4 | **PD** | 0.45d | 2017-02-07 09:00 | 2017-02-07 15:30 |  | 64.85d |  |  |  | 4.5h | 125 |
| 211 | 4.1.4.1 | **Trailer del proyecto** | 0.45d | 2017-02-07 09:00 | 2017-02-07 15:30 |  | 64.85d |  |  |  | 4.5h | 125 |
| 212 | 4.1.4.1.1 | Escribir guión | 2h | 2017-02-07 09:00 | 2017-02-07 11:00 |  | 64.85d | 0d | start no earlier than 2017-02-07 09:00 | Jorge | 2h | 100 |
| 213 | 4.1.4.1.2 | Hacer Storyboard | 2.5h | 2017-02-07 11:00 | 2017-02-07 15:30 | 212 | 64.85d | 2.75d | start no earlier than 2017-02-07 09:00 | Jorge | 2.5h | 25 |
| 214 | 4.1.5 | **SMBI** | 1.1d | 2017-02-02 09:00 | 2017-02-03 12:00 |  | 66.5d |  |  |  | 11h | 110 |
| 215 | 4.1.5.1 | **Implementación** | 0.7d | 2017-02-02 09:00 | 2017-02-02 18:00 |  | 66.5d |  |  |  | 7h | 70 |
| 216 | 4.1.5.1.1 | Implementar funciones GET | 2h | 2017-02-02 09:00 | 2017-02-02 11:00 |  | 66.5d | 0d | start no earlier than 2017-02-02 09:00 | Manuel | 2h | 20 |
| 217 | 4.1.5.1.2 | Implementar funciones PUT | 3h | 2017-02-02 11:00 | 2017-02-02 16:00 | 216 | 66.5d | 0d |  | Manuel | 3h | 30 |
| 218 | 4.1.5.1.3 | Implementar funciones DELETE | 2h | 2017-02-02 16:00 | 2017-02-02 18:00 | 217 | 66.5d | 0d |  | Manuel | 2h | 20 |
| 219 | 4.1.5.2 | **Pruebas funciones** | 0.4d | 2017-02-02 18:00 | 2017-02-03 12:00 |  | 66.6d |  |  |  | 4h | 40 |
| 220 | 4.1.5.2.1 | Probar PUT | 2h | 2017-02-02 18:00 | 2017-02-03 10:00 | 217 | 66.8d | 69d |  | Manuel | 2h | 20 |
| 221 | 4.1.5.2.2 | Probar DELETE | 2h | 2017-02-03 10:00 | 2017-02-03 12:00 | 218 | 66.6d | 68.8d | finish no earlier than 2016-10-04 11:00 | Manuel | 2h | 20 |
| 222 | 4.1.6 | **NM** | 0.2d | 2017-02-03 09:00 | 2017-02-03 11:00 |  | 66.7d |  |  |  | 2h | 20 |
| 223 | 4.1.6.1 | **Definición de KPI's e implementación** | 0.2d | 2017-02-03 09:00 | 2017-02-03 11:00 |  | 66.7d |  |  |  | 2h | 20 |
| 224 | 4.1.6.1.1 | Definir KPI's | 2h | 2017-02-03 09:00 | 2017-02-03 11:00 |  | 66.7d | 68.7d | start no earlier than 2017-02-03 09:00 | Antonio | 2h | 20 |
| 225 | 4.2 | **Iteración 2** | 8d? | 2017-02-13 09:00 | 2017-02-24 19:00 | 191 | 62.1d | 0d |  |  | 304h | 3,040 |
| 226 | 4.2.1 | **SMBI** | 6d | 2017-02-13 09:00 | 2017-02-22 13:00 |  | 64.1d |  |  |  | 60h | 600 |
| 227 | 4.2.1.1 | Hacer GET BY de todas las entidades | 2d | 2017-02-13 09:00 | 2017-02-15 13:00 |  | 64.1d | 0d |  | Manuel | 20h | 200 |
| 228 | 4.2.1.2 | Hacer DELETE BY de todas las entidades | 2d | 2017-02-15 15:00 | 2017-02-17 19:00 | 227 | 64.1d | 0d |  | Manuel | 20h | 200 |
| 229 | 4.2.1.3 | Conseguir atributos de una entidad a partir de un GET a otra entidad | 2d | 2017-02-20 09:00 | 2017-02-22 13:00 | 228 | 64.1d |  |  | Manuel | 20h | 200 |
| 230 | 4.2.2 | **SMA** | 6.8d | 2017-02-13 09:00 | 2017-02-23 13:00 |  | 63.3d |  |  |  | 88h | 880 |
| 231 | 4.2.2.1 | **Integración Front-Back** | 0.8d | 2017-02-22 15:00 | 2017-02-23 13:00 |  | 63.3d |  |  |  | 8h | 80 |
| 232 | 4.2.2.1.1 | Hacer documento de relación entre back-end y front-end (detalle desde dónde se llama a la API en el front-end) | 8h | 2017-02-22 15:00 | 2017-02-23 13:00 |  | 63.3d |  | finish no earlier than 2017-01-27 19:00 | Manuel | 8h | 80 |
| 233 | 4.2.2.2 | Definir interfaces | 2.3d | 2017-02-13 09:00 | 2017-02-15 18:00 |  | 67.8d | 68.1d |  | Nahiara; Ricardo | 40h | 400 |
| 234 | 4.2.2.3 | Crear interfaces para front-end | 2.3d | 2017-02-15 15:00 | 2017-02-20 12:00 |  | 65.8d |  |  | Nahiara; Ricardo | 40h | 400 |

| ID | WBS | Task | Type | Duration | Start | Finish | Predecessors | Total slack | Free slack | Constraint | Resources | Work | Cost |
| --- | --- | --- | --- | --- | --- | --- | --- | --- | --- | --- | --- | --- | --- |
| 235 | 4.2.3 | **PD** |  | 8d? | 2017-02-13 09:00 | 2017-02-24 19:00 |  | 62.1d |  |  |  | 75h | 750 |
| 236 | 4.2.3.1 | **Trailer del proyecto** |  | 8d? | 2017-02-13 09:00 | 2017-02-24 19:00 |  | 62.1d |  |  |  | 60h | 600 |
| 237 | 4.2.3.1.1 | Grabar video |  | 2d? | 2017-02-13 09:00 | 2017-02-15 13:00 | 213 | 62.1d | 0d |  | Jorge; Antonio | 40h | 400 |
| 238 | 4.2.3.1.2 | Editar video |  | 2d? | 2017-02-22 15:00 | 2017-02-24 19:00 | 237 | 62.1d |  |  | Jorge; Antonio | 20h | 200 |
| 239 | 4.2.3.2 | **Creditos** |  | 1.5d? | 2017-02-15 15:00 | 2017-02-17 12:00 |  | 66.6d | 4.5d |  |  | 15h | 150 |
| 240 | 4.2.3.2.1 | Crear creditos |  | 1.5d? | 2017-02-15 15:00 | 2017-02-17 12:00 | 237 | 66.6d |  |  | Antonio | 15h | 150 |
| 241 | 4.2.4 | **NM** |  | 5d? | 2017-02-15 15:00 | 2017-02-23 17:00 |  | 63.1d |  |  |  | 50h | 500 |
| 242 | 4.2.4.1 | **Despliegue de la infraestructura del proyecto** | inactive | 1d? | 2017-02-13 09:00 | 2017-02-14 11:00 |  | 63d |  |  |  | 10h | 100 |
| 243 | 4.2.4.1.1 | Desplegar infraestructura del proyecto | inactive | 1d? | 2017-02-13 09:00 | 2017-02-14 11:00 |  | 63d | 0d | start no earlier than 2017-02-13 09:00 | Jorge | 10h | 100 |
| 244 | 4.2.4.2 | **Definición de KPI's implementación** |  | 3d? | 2017-02-15 15:00 | 2017-02-21 11:00 |  | 65.1d |  |  |  | 30h | 300 |
| 245 | 4.2.4.2.1 | Implementar KPI's |  | 3d? | 2017-02-15 15:00 | 2017-02-21 11:00 |  | 65.1d |  |  | Jorge | 30h | 300 |
| 246 | 4.2.4.3 | **Definición de cuadros de mando e implementación** |  | 2d? | 2017-02-21 11:00 | 2017-02-23 17:00 |  | 63.1d |  |  |  | 20h | 200 |
| 247 | 4.2.4.3.1 | Definir cuadros de mando |  | 2d? | 2017-02-21 11:00 | 2017-02-23 17:00 | 243 | 63.1d | 0d | start no earlier than 2017-02-13 09:00 | Jorge | 20h | 200 |
| 248 | 4.2.4.3.2 | Implementar cuadros de mando | inactive | 1d? | 2017-02-23 17:00 | 2017-02-24 19:00 | 247 | 62.1d | 2d | start no earlier than 2017-02-13 09:00 | Jorge | 10h | 100 |
| 249 | 4.2.5 | **ELE** |  | 4.6d? | 2017-02-13 09:00 | 2017-02-20 17:00 |  | 65.5d |  |  |  | 6h | 60 |
| 250 | 4.2.5.1 | **Tarea 2** |  | 4.6d? | 2017-02-13 09:00 | 2017-02-20 17:00 |  | 65.5d |  |  |  | 6h | 60 |
| 251 | 4.2.5.1.1 | Hacer guión |  | 3h? | 2017-02-13 09:00 | 2017-02-13 12:00 |  | 65.5d | 0d |  | Ricardo | 3h | 30 |
| 252 | 4.2.5.1.2 | Hacer guión gráfico |  | 3h? | 2017-02-20 12:00 | 2017-02-20 17:00 | 251 | 65.5d | 3.4d |  | Ricardo | 3h | 30 |
| 253 | 4.2.6 | **TAG** |  | 2.5d? | 2017-02-17 12:00 | 2017-02-22 13:00 |  | 64.1d |  |  |  | 25h | 250 |
| 254 | 4.2.6.1 | **Árbol de la escena** |  | 2.5d? | 2017-02-17 12:00 | 2017-02-22 13:00 |  | 64.1d |  |  |  | 25h | 250 |
| 255 | 4.2.6.1.1 | **Tipos de datos para entidades de tipo transformación (5)** |  | 2.5d? | 2017-02-17 12:00 | 2017-02-22 13:00 |  | 64.1d |  |  |  | 25h | 250 |
| 256 | 4.2.6.1.1.1 | Definir tipos de datos para entidades de tipo transformación (traslación, rotación y escalado relativos y absolutos. Otras transformaciones) |  | 23h? | 2017-02-17 12:00 | 2017-02-22 11:00 |  | 64.3d |  |  | Antonio | 23h | 230 |
| 257 | 4.2.6.1.1.2 | Implementar salida en modo texto |  | 2h? | 2017-02-22 11:00 | 2017-02-22 13:00 |  | 64.1d |  |  | Antonio | 2h | 20 |
| 258 | 4.3 | **Iteracion 3** |  | 2d? | 2017-02-27 09:00 | 2017-03-01 13:00 | 225 | 62.1d | 0d |  |  | 22h | 220 |
| 259 | 4.3.1 | **ELE** |  | 0.2d? | 2017-02-27 09:00 | 2017-02-27 11:00 |  | 63.9d |  |  |  | 2h | 20 |
| 260 | 4.3.1.1 | **Tarea 3** |  | 0.2d? | 2017-02-27 09:00 | 2017-02-27 11:00 |  | 63.9d |  |  |  | 2h | 20 |
| 261 | 4.3.1.1.1 | Definir tecnologias |  | 2h? | 2017-02-27 09:00 | 2017-02-27 11:00 | 252 | 63.9d | 16.8d |  | Ricardo | 2h | 20 |

| ID | WBS | Task | Duration | Start | Finish | Predecessors | Total slack | Free slack | Constraint | Resources | Work | Cost |
| --- | --- | --- | --- | --- | --- | --- | --- | --- | --- | --- | --- | --- |
| 262 | 4.3.2 | **PD** | 2d? | 2017-02-27 09:00 | 2017-03-01 13:00 |  | 62.1d |  |  |  | 20h | 200 |
| 263 | 4.3.2.1 | Making of del proyecto | 2d? | 2017-02-27 09:00 | 2017-03-01 13:00 | 239 | 62.1d | 64.1d | start no earlier than 2017-02-14 11:00 | Jorge | 20h | 200 |
| 264 | 4.3.3 | **NM** | 1d? | 2017-02-27 09:00 | 2017-02-28 11:00 |  | 63.1d |  |  |  |  |  |
| 265 | 4.3.3.1 | **Definición de KPI's implementación** | 1d? | 2017-02-27 09:00 | 2017-02-28 11:00 |  | 63.1d |  |  |  |  |  |
| 266 | 4.3.3.1.1 | Implementar KPI's | 1d? | 2017-02-27 09:00 | 2017-02-28 11:00 |  | 63.1d | 65.1d |  |  |  |  |
| 267 | 4.3.4 | **TAG** | 2d? | 2017-02-27 09:00 | 2017-03-01 13:00 |  | 62.1d |  |  |  |  |  |
| 268 | 4.3.4.1 | **Tipos de datos para entidades de tipo cámara y luz (6)** | 0.2d? | 2017-02-27 09:00 | 2017-02-27 11:00 |  | 63.9d |  |  |  |  |  |
| 269 | 4.3.4.1.1 | Definir tipos de datos para entidades de tipo cámara y luz (cámaras y luces de dos tipos). | 2h? | 2017-02-27 09:00 | 2017-02-27 11:00 |  | 63.9d | 65.9d |  |  |  |  |
| 270 | 4.3.4.1.2 | Implementar salida en modo texto | 2h? | 2017-02-27 09:00 | 2017-02-27 11:00 |  | 63.9d | 65.9d |  |  |  |  |
| 271 | 4.3.4.2 | **Tipos de datos para entidades de tipo malla (7)** | 0.6d? | 2017-02-27 09:00 | 2017-02-27 17:00 |  | 63.5d |  |  |  |  |  |
| 272 | 4.3.4.2.1 | Definir tipos de datos para entidades de tipo malla | 6h? | 2017-02-27 09:00 | 2017-02-27 17:00 |  | 63.5d | 65.5d |  |  |  |  |
| 273 | 4.3.4.2.2 | Implementar salida en modo texto | 2h? | 2017-02-27 09:00 | 2017-02-27 11:00 |  | 63.9d | 65.9d |  |  |  |  |
| 274 | 4.3.4.3 | **Tipos de datos para entidades de tipo animación (8)** | 0.3d? | 2017-02-27 09:00 | 2017-02-27 12:00 |  | 63.8d |  |  |  |  |  |
| 275 | 4.3.4.3.1 | Definir tipos de datos para entidades de tipo animación (cuadro a cuadro) | 3h? | 2017-02-27 09:00 | 2017-02-27 12:00 |  | 63.8d | 65.8d |  |  |  |  |
| 276 | 4.3.4.3.2 | Implementar salida en modo texto | 2h? | 2017-02-27 09:00 | 2017-02-27 11:00 |  | 63.9d | 65.9d |  |  |  |  |
| 277 | 4.3.4.4 | **Gestor de recursos (9)** | 0.9d? | 2017-02-27 09:00 | 2017-02-28 10:00 |  | 63.2d |  |  |  |  |  |
| 278 | 4.3.4.4.1 | Cargar modelos en formato múltiple en las entidades de tipo malla | 9h? | 2017-02-27 09:00 | 2017-02-28 10:00 |  | 63.2d | 65.2d |  |  |  |  |
| 279 | 4.3.4.4.2 | Cargar varios ficheros para animación | 9h? | 2017-02-27 09:00 | 2017-02-28 10:00 |  | 63.2d | 65.2d |  |  |  |  |
| 280 | 4.3.4.4.3 | Implementar salida en modo texto | 2h? | 2017-02-27 09:00 | 2017-02-27 11:00 |  | 63.9d | 65.9d |  |  |  |  |
| 281 | 4.3.4.5 | **Visualización (10,11)** | 2d? | 2017-02-27 09:00 | 2017-03-01 13:00 |  | 62.1d |  |  |  |  |  |
| 282 | 4.3.4.5.1 | Realizar visualizador OpenGL 4.X de las entidades tipo malla. Shader básico. Integración con el motor. Sin materiales, texturas, cámara ni luces | 10h? | 2017-02-27 09:00 | 2017-02-28 11:00 |  | 63.1d | 65.1d |  |  |  |  |
| 283 | 4.3.4.5.2 | Realizar visualizador OpenGL 4.X de las entidades tipo malla. Shader básico. Con cámaras y luces de varios tipos. Visualización con registro de cámaras y luces. | 20h? | 2017-02-27 09:00 | 2017-03-01 13:00 |  | 62.1d | 64.1d |  |  |  |  |
| 284 | 4.4 | **Iteracion 4** | 15d? | 2017-03-01 15:00 | 2017-03-28 11:00 | 258 | 62.1d | 0d |  |  | 150h | 1,500 |
| 285 | 4.4.1 | **NM** | 15d? | 2017-03-01 15:00 | 2017-03-28 11:00 |  | 62.1d |  |  |  | 150h | 1,500 |
| 286 | 4.4.1.1 | **Valoración de los cuadros de mando** | 8d? | 2017-03-01 15:00 | 2017-03-15 13:00 |  | 62.1d |  |  |  | 80h | 800 |
| 287 | 4.4.1.1.1 | Valorar los cuadros de mando | 8d? | 2017-03-01 15:00 | 2017-03-15 13:00 | 248 | 62.1d | 0d | finish no earlier than 2017-03-12 19:00 | Jorge | 80h | 800 |

| ID | WBS | Task | Type | Duration | Start | Finish | Predecessors | Total slack | Free slack | Constraint | Resources | Work | Cost |
| --- | --- | --- | --- | --- | --- | --- | --- | --- | --- | --- | --- | --- | --- |
| 288 | 4.4.1.2 | **Valoración KPI's definidos** |  | 7d? | 2017-03-15 15:00 | 2017-03-28 11:00 |  | 62.1d |  |  |  | 70h | 700 |
| 289 | 4.4.1.2.1 | Valorar KPI's definidos |  | 7d? | 2017-03-15 15:00 | 2017-03-28 11:00 | 287 | 62.1d |  | finish no earlier than 2017-03-12 19:00 | Jorge | 70h | 700 |
| 290 | 4.4.2 | **TAG** |  | 2d? | 2017-03-01 15:00 | 2017-03-03 19:00 |  | 75.1d |  |  |  |  |  |
| 291 | 4.4.2.1 | **Gestor de recursos (12)** |  | 2d? | 2017-03-01 15:00 | 2017-03-03 19:00 |  | 75.1d |  |  |  |  |  |
| 292 | 4.4.2.1.1 | Cargar materiales y texturas. Salida en modo texto |  | 20h? | 2017-03-01 15:00 | 2017-03-03 19:00 |  | 75.1d | 77.1d |  |  |  |  |
| 293 | 4.4.2.2 | **Visualización (13)** |  | 2d? | 2017-03-01 15:00 | 2017-03-03 19:00 |  | 75.1d |  |  |  |  |  |
| 294 | 4.4.2.2.1 | Realizar visualizador OpenGL 4.X de las entidades tipo malla. Shader básico. Añadiendo materiales y texturas. |  | 20h? | 2017-03-01 15:00 | 2017-03-03 19:00 |  | 75.1d | 77.1d |  |  |  |  |
| 295 | 4.5 | **Iteracion 5** |  | 65.6d? | 2017-03-28 11:00 | 2017-07-20 11:00 | 284 | 0d |  |  |  | 20h | 200 |
| 296 | 4.5.1 | **PM** |  | 0d | 2017-03-28 11:00 | 2017-03-28 11:00 |  | 65.6d |  |  |  |  |  |
| 297 | 4.5.1.1 | **Seguimiento** |  | 0d | 2017-03-28 11:00 | 2017-03-28 11:00 |  | 65.6d |  |  |  |  |  |
| 298 | 4.5.1.1.1 | Registrar de tiempos y % de realización de tareas en Project | milestone | 0d | 2017-03-28 11:00 | 2017-03-28 11:00 |  | 65.6d | 67.6d | start no earlier than 2017-02-13 09:00 | Nahiara |  |  |
| 299 | 4.5.1.1.2 | Comparar la planificación prevista y real en Project hito 3 | milestone | 0d | 2017-03-28 11:00 | 2017-03-28 11:00 |  | 65.6d | 67.6d | start no earlier than 2017-02-13 09:00 | Nahiara |  |  |
| 300 | 4.5.1.1.3 | Confeccionar Informes de iteración e informe resumen de Hito 3 | milestone | 0d | 2017-03-28 11:00 | 2017-03-28 11:00 |  | 65.6d | 67.6d | start no earlier than 2017-02-13 09:00 | Nahiara |  |  |
| 301 | 4.5.1.2 | **Presentación** |  | 0d | 2017-03-28 11:00 | 2017-03-28 11:00 |  | 65.6d |  |  |  |  |  |
| 302 | 4.5.1.2.1 | Elaborar la presentación del Hito 3 | milestone | 0d | 2017-03-28 11:00 | 2017-03-28 11:00 |  | 65.6d | 67.6d | start no earlier than 2017-02-13 09:00 |  |  |  |
| 303 | 4.5.2 | **SMA** |  | 1d? | 2017-03-28 11:00 | 2017-03-29 13:00 |  | 64.6d |  |  |  |  |  |
| 304 | 4.5.2.1 | **Implementación front-end** |  | 1d? | 2017-03-28 11:00 | 2017-03-29 13:00 |  | 64.6d |  |  |  |  |  |
| 305 | 4.5.2.1.1 | Implementar funcionalidades de front-end |  | 1d? | 2017-03-28 11:00 | 2017-03-29 13:00 |  | 64.6d | 66.6d |  |  |  |  |
| 306 | 4.5.2.2 | **Documentación front-end** |  | 1d? | 2017-03-28 11:00 | 2017-03-29 13:00 |  | 64.6d |  |  |  |  |  |
| 307 | 4.5.2.2.1 | Hacer documentación de esctructura de código y particularidades especiales |  | 1d? | 2017-03-28 11:00 | 2017-03-29 13:00 |  | 64.6d | 66.6d |  |  |  |  |
| 308 | 4.5.3 | **NM** |  | 1d? | 2017-07-19 09:00 | 2017-07-20 11:00 |  | 0d |  |  |  | 10h | 100 |
| 309 | 4.5.3.1 | **Incorporación de nuevos elementos según datos** |  | 1d? | 2017-07-19 09:00 | 2017-07-20 11:00 |  | 0d |  |  |  | 10h | 100 |
| 310 | 4.5.3.1.1 | Incorporar nuevos elementos según datos |  | 1d? | 2017-07-19 09:00 | 2017-07-20 11:00 | 289 | 0d |  | start no earlier than 2017-07-19 09:00 | Jorge | 10h | 100 |
| 311 | 4.5.4 | **ELE** |  | 1d? | 2017-03-28 11:00 | 2017-03-29 13:00 |  | 64.6d |  |  |  | 10h | 100 |
| 312 | 4.5.4.1 | **Tarea 4** |  | 1d? | 2017-03-28 11:00 | 2017-03-29 13:00 |  | 64.6d |  |  |  | 10h | 100 |
| 313 | 4.5.4.1.1 | Crear video |  | 1d? | 2017-03-28 11:00 | 2017-03-29 13:00 | 261 | 64.6d | 66.6d | start no earlier than 2017-02-13 09:00 | Ricardo | 10h | 100 |

| ID | WBS | Task | Type | Duration | Start | Finish | Predecessors | Total slack | Free slack | Constraint | Resources | Work | Cost |
| --- | --- | --- | --- | --- | --- | --- | --- | --- | --- | --- | --- | --- | --- |
| 314 | 4.5.5 | **TAG** |  | 3.5d? | 2017-03-28 11:00 | 2017-04-03 16:00 |  | 62.1d |  |  |  |  |  |
| 315 | 4.5.5.1 | **Fachada (14)** |  | 2.5d? | 2017-03-28 11:00 | 2017-03-31 12:00 |  | 63.1d |  |  |  |  |  |
| 316 | 4.5.5.1.1 | Crear fachada entre el motor y la aplicación |  | 25h? | 2017-03-28 11:00 | 2017-03-31 12:00 |  | 63.1d | 65.1d |  |  |  |  |
| 317 | 4.5.5.2 | **Visualización (15)** |  | 3.5d? | 2017-03-28 11:00 | 2017-04-03 16:00 |  | 62.1d |  |  |  |  |  |
| 318 | 4.5.5.2.1 | Realizar visualizador OpenGL 4.X con tres shaders avanzados |  | 35h? | 2017-03-28 11:00 | 2017-04-03 16:00 |  | 62.1d | 64.1d |  |  |  |  |
| 319 | 4.5.6 | **SMBI** |  | 0d? | 2017-03-28 11:00 | 2017-03-28 11:00 |  | 65.6d |  |  |  |  |  |
| 320 | 4.5.6.1 | **Validación** |  | 0d? | 2017-03-28 11:00 | 2017-03-28 11:00 |  | 65.6d |  |  |  |  |  |
| 321 | 4.5.6.1.1 | Validar el funcionamiento del backend (Pruebas API Rest Full) | inactive | 10h | 2017-03-28 11:00 | 2017-03-29 13:00 |  | 64.6d | 66.6d | finish no earlier than 2017-01-30 19:00 | Manuel | 10h | 100 |
| 322 | 4.5.6.2 | **Pruebas** |  | 0d? | 2017-03-28 11:00 | 2017-03-28 11:00 |  | 65.6d |  |  |  |  |  |
| 323 | 4.5.6.2.1 | Hacer pruebas de integración | inactive | 15h | 2017-03-28 11:00 | 2017-03-30 10:00 |  | 62.6d | 0d | start no earlier than 2017-01-09 09:00 | Manuel | 15h | 150 |
| 324 | 4.5.6.2.2 | Hacer pruebas funcionales | inactive | 10h | 2017-03-30 10:00 | 2017-03-31 12:00 | 323 | 62.6d | 0d |  | Manuel | 10h | 100 |
| 325 | 4.5.6.2.3 | Hacer pruebas de regresión | inactive | 5h | 2017-03-31 12:00 | 2017-03-31 19:00 | 324 | 62.6d | 64.6d | start no earlier than 2017-01-13 09:00 | Manuel | 5h | 50 |
| 326 | 4.5.6.2.4 | Hacer pruebas de carga y rendimiento | inactive | 1d? | 2017-03-28 11:00 | 2017-03-29 13:00 |  | 64.6d | 66.6d | finish no earlier than 2017-01-30 19:00 | Manuel | 10h | 100 |
| 327 | 5 | **HITO 4** |  | 29.6d? | 2017-07-20 11:00 | 2017-09-11 11:00 | 190 | 0d |  |  |  |  |  |
| 328 | 5.1 | **PM** |  | 29.6d | 2017-07-20 11:00 | 2017-09-11 11:00 |  | 0d |  |  |  |  |  |
| 329 | 5.1.1 | **Planificación** |  | 29.6d | 2017-07-20 11:00 | 2017-09-11 11:00 |  | 0d |  |  |  |  |  |
| 330 | 5.1.1.1 | **Detallar plan iteraciones del mes de Abril-Mayo** |  | 29.6d | 2017-07-20 11:00 | 2017-09-11 11:00 |  | 0d |  |  |  |  |  |
| 331 | 5.1.1.1.1 | Creación Subtareas y precedencias en Project |  | 29.6d | 2017-07-20 11:00 | 2017-09-11 11:00 |  | 0d |  |  |  |  |  |
| 332 | 5.1.1.1.2 | Asignar recursos a las tareas en Project |  | 29.6d | 2017-07-20 11:00 | 2017-09-11 11:00 |  | 0d |  |  |  |  |  |
| 333 | 5.1.2 | **Seguimiento** |  | 29.6d | 2017-07-20 11:00 | 2017-09-11 11:00 |  | 0d |  |  |  |  |  |
| 334 | 5.1.2.1 | Registrar de tiempos y % de realización de tareas en Project |  | 29.6d | 2017-07-20 11:00 | 2017-09-11 11:00 |  | 0d |  |  |  |  |  |
| 335 | 5.1.2.2 | Comparar la planificación prevista y real en Project hito 4 |  | 29.6d | 2017-07-20 11:00 | 2017-09-11 11:00 |  | 0d |  |  |  |  |  |
| 336 | 5.1.2.3 | Confeccionar Informes de iteración e informe resumen de Hito 4 |  | 29.6d | 2017-07-20 11:00 | 2017-09-11 11:00 |  | 0d |  |  |  |  |  |
| 337 | 5.1.3 | **Presentación** |  | 29.6d | 2017-07-20 11:00 | 2017-09-11 11:00 |  | 0d |  |  |  |  |  |
| 338 | 5.1.3.1 | Elaborar la presentación del Hito 4 |  | 29.6d | 2017-07-20 11:00 | 2017-09-11 11:00 |  | 0d |  |  |  |  |  |
| 339 | 5.1.3.2 | Exponer la presentación del Hito 4 |  | 29.6d | 2017-07-20 11:00 | 2017-09-11 11:00 |  | 0d |  |  |  |  |  |

| ID | WBS | Task | Duration | Start | Finish | Total slack |
| --- | --- | --- | --- | --- | --- | --- |
| 340 | 5.2 | **TAG** | 29.6d | 2017-07-20 11:00 | 2017-09-11 11:00 | 0d |
| 341 | 5.2.1 | **IGC** | 29.6d | 2017-07-20 11:00 | 2017-09-11 11:00 | 0d |
| 342 | 5.2.1.1 | **Aplicación** | 29.6d | 2017-07-20 11:00 | 2017-09-11 11:00 | 0d |
| 343 | 5.2.1.1.1 | Cargador de modelos | 29.6d | 2017-07-20 11:00 | 2017-09-11 11:00 | 0d |
| 344 | 5.2.1.1.2 | Movimiento del modelo, de las luces y de la cámara | 29.6d | 2017-07-20 11:00 | 2017-09-11 11:00 | 0d |
| 345 | 5.2.1.1.3 | Cambio de modelo, materiales y texturas | 29.6d | 2017-07-20 11:00 | 2017-09-11 11:00 | 0d |
| 346 | 5.2.1.1.4 | Animaciones | 29.6d | 2017-07-20 11:00 | 2017-09-11 11:00 | 0d |
| 347 | 5.2.1.1.5 | Integración con el motor | 29.6d | 2017-07-20 11:00 | 2017-09-11 11:00 | 0d |
| 348 | 5.2.2 | Optimizaciones del motor | 29.6d | 2017-07-20 11:00 | 2017-09-11 11:00 | 0d |
| 349 | 5.2.3 | Efectos visuales | 29.6d | 2017-07-20 11:00 | 2017-09-11 11:00 | 0d |
| 350 | 5.3 | **SMA** | 29.6d | 2017-07-20 11:00 | 2017-09-11 11:00 | 0d |
| 351 | 5.3.1 | Documento de pruebas donde se documenta las pruebas de las funcionalidades principales (por lo menos las interfaces principales) | 29.6d | 2017-07-20 11:00 | 2017-09-11 11:00 | 0d |
| 352 | 5.3.2 | Pruebas de la aplicación demostrando que no hay errores (falta de librerías, archivos que no se descargan, errores javascript) | 29.6d | 2017-07-20 11:00 | 2017-09-11 11:00 | 0d |
| 353 | 5.3.3 | Pruebas de seguridad de front end | 29.6d | 2017-07-20 11:00 | 2017-09-11 11:00 | 0d |
| 354 | 5.3.4 | Pruebas de rendimiento (velocidad de carga, que todo carga y no hay errores) | 29.6d | 2017-07-20 11:00 | 2017-09-11 11:00 | 0d |
| 355 | 5.3.5 | Validar las funcionalidades (comprobar que realmente han sido implementadas), las funcionalidades han quedado recogidas en las interfaces implementadas | 29.6d | 2017-07-20 11:00 | 2017-09-11 11:00 | 0d |
| 356 | 5.3.6 | Informe | 29.6d | 2017-07-20 11:00 | 2017-09-11 11:00 | 0d |
| 357 | 5.4 | **NM** | 29.6d | 2017-07-20 11:00 | 2017-09-11 11:00 | 0d |
| 358 | 5.4.1 | Validación del funcionamiento | 29.6d | 2017-07-20 11:00 | 2017-09-11 11:00 | 0d |
| 359 | 5.4.2 | Informe | 29.6d | 2017-07-20 11:00 | 2017-09-11 11:00 | 0d |
| 360 | 5.5 | **ELE** | 1d? | 2017-07-20 11:00 | 2017-07-21 13:00 | 28.6d |
| 361 | 5.5.1 | **Tarea 5** | 1d? | 2017-07-20 11:00 | 2017-07-21 13:00 | 28.6d |
| 362 | 5.5.1.1 | Grabar audio | 1d? | 2017-07-20 11:00 | 2017-07-21 13:00 | 28.6d |
| 363 | 5.5.2 | **Tarea 6** | 1d? | 2017-07-20 11:00 | 2017-07-21 13:00 | 28.6d |
| 364 | 5.5.2.1 | Hacer montaje | 1d? | 2017-07-20 11:00 | 2017-07-21 13:00 | 28.6d |
